# ----------------Project Header-------------
project project_tehran "Tehran Construction Project" 2025-01-01 +546d {
    timezone "Asia/Tehran"
    currency "IRR"
    now 2025-05-26

    scenario plan "Planned" {
        scenario delayed "starts with delay"
    }
    extend task {
        date Deadline "Deadline"
    }
    extend resource {
        text Type "Type"
        number OvertimeCost "Overtime Cost"
        date Availability "Availability Date"
        date WorkinghoursChange "Workinghours Change"
        number BaseCost "Base Cost"
        number ActualCost "Actual Cost"
        text AccrueAt "Accrue at"
    }
    outputdir "exports/csv/"
}

# ------------END-------------

# ------------Shifts-------------
shift projectDefaultShift "project default shift" {
    timezone "Asia/Tehran"
}
# ------------END-------------


# ------------Holidays-------------
# ------------END-------------


# ------------Flags-------------
flags
task_5,
task_5_1,
human,
equipment,
Heavy Equipment,
none,
site_team,
HeavyMachines,
task_1_1,
task_2_1,
task_1,
task_2,
task_3_1,
task_3,
task_4,
management,
task_1_2
# ------------END-------------


# ----------------Accounts-------------
account cost "costs of project" {
    account task_1Costs "Costs of task_1" { aggregate tasks }
    account task_2Costs "Costs of task_2" { aggregate tasks }
    account task_3Costs "Costs of task_3" { aggregate tasks }
    account task_4Costs "Costs of task_4" { aggregate tasks }
    account task_5Costs "Costs of task_5" { aggregate tasks }
    account CC123 "Costs of CC123" { aggregate resources }
    account engineering "Costs of engineering" { aggregate resources }
    account construction "Costs of construction" { aggregate resources }

}
account rev "Revenue"
balance cost rev
# ------------END-------------


# ------------Resources-------------
# ------------END-------------



# ------------Tasks-------------
    task task_1 "مدیریت پروژه" {
    period 2025-06-01 - 2025-11-27
    allocate p, r, o, j, e, c, t, _, m, a, n, a, g, e, r
    minstart 2025-06-01
    Deadline 2025-11-27
    priority 1
    flags none
    chargeset task_1Costs
    charge 1000000.0 onend
    note "مدیریت کلی پروژه شامل برنامه‌ریزی، نظارت و گزارش‌دهی"

}
    task task_2 "آماده‌سازی سایت" {
    period 2025-07-31 - 2025-09-28
    allocate s, i, t, e, _, m, a, n, a, g, e, r
    depends t, a, s, k, _, 1, ., t, a, s, k, _, 1, _, 2, ., t, a, s, k, _, 1, _, 2, _, 1
    minstart 2025-07-31
    Deadline 2025-09-28
    priority 1
    flags none
    chargeset task_2Costs
    charge 300000.0 onend
    note "آماده‌سازی محل پروژه برای ساخت"

}
    task task_3 "اجرای اسکلت ساختمان" {
    period 2025-09-29 - 2026-01-26
    allocate c, i, v, i, l, _, e, n, g, i, n, e, e, r
    minstart 2025-09-29
    Deadline 2026-01-26
    priority 1
    flags none
    chargeset task_3Costs
    charge 1000000.0 onend
    note "اجرای اسکلت اصلی ساختمان"

}
    task task_4 "سفت‌کاری" {
    period 2025-11-08 - 2026-02-05
    allocate c, i, v, i, l, _, e, n, g, i, n, e, e, r
    minstart 2025-11-08
    Deadline 2026-02-05
    priority 1
    flags none
    chargeset task_4Costs
    charge 800000.0 onend
    note "اجرای سفت‌کاری ساختمان"

}
    task task_5 "تأسیسات مکانیکی و برقی" {
    period 2026-02-06 - 2026-04-06
    allocate m, e, c, h, a, n, i, c, a, l, _, e, n, g, i, n, e, e, r
    minstart 2026-02-06
    Deadline 2026-04-06
    priority 1
    flags none
    chargeset task_5Costs
    charge 600000.0 onend
    note "نصب تأسیسات مکانیکی و برقی"

}
# ------------END-------------


# ------------Reports-------------
taskreport taskReports "task_report" {
    headline "Tasks Table"
    formats csv
    columns
    bsi{title "wbs"}, id{title "id"}, name{title "name"},
    start{title "start"}, end{title "end"},
    minstart{title "min_start"}, maxstart{title "max_start"},
    minend{title "min_end"}, maxend{title "max_end"},
    Deadline{title "deadline"}, duration{title "duration"},
    effort{title "effort"}, priority{title "priority"},
    children{title "sub_tasks"}, resources{title "resources"},
    flags{title "task_linking"} , complete{title "complete"}
    balance cost rev
    hideresource @all
}

taskreport tasksGanttChart "task_gantt_chart" {
    headline "Tasks Gantt Chart"
    formats csv
    columns id{title "id"}, name, start, end, duration, effort, chart
}

resourcereport resourceReports "resource_report" {
    headline "Resources Table"
    formats csv
    columns
    bsi{title "wbs"}, id{title "id"}, name{title "name"},
    BaseCost{title "base_cost"}, ActualCost{title "actual_cost"},
    rate{title "rate"}, AccrueAt{title "accrue_at"},
    OvertimeCost{title "overtime_cost"}, efficiency{title "efficiency"}, Type{title "type"},
    Availability{title "availability_date"}, flags
    hidetask @all
    sortresources tree
}

accountreport accountReports "cost_report" {
    formats csv
    columns bsi, id{title "id"}, name
}

# ------------END-------------
